# T3-Sc-K6-03-HRGenix

Schedule from MS Project, 2024-09-23 to 2025-03-11.

## Calendars

- Standard: Mon-Fri 08:00-12:00, 13:00-17:00; Sat-Sun off.

## Resources

| Resource |
| --- |
| MS Teams |
| Googlr Docs |
| Zoom Meeting |
| Google Docs |
| MS Project |
| Google Sheets |
| Google Form |
| Visual Studio Code |
| Draw.io |
| Github |
| Figma |
| Google Sg |
| Stakeholder |
| Manajer proyek |
| DevOps and Infrastructure |
| UI/UX Designer |
| Frontend Developer |
| Backend Developer |
| Quality Assurance |
| Machine Learning Engineer |

## Schedule

| ID | WBS | Task | Type | Duration | Start | Finish | Predecessors | Total slack | Free slack | Resources | Work |
| --- | --- | --- | --- | --- | --- | --- | --- | --- | --- | --- | --- |
| 1 | 1 | **1. Initiating** |  | 10d | 2024-09-23 | 2024-10-04 |  | 0d |  |  | 152h |
| 2 | 1.1 | 1.1. Menentukan project manager | manual | 1d | 2024-09-23 | 2024-09-23 |  |  |  | Stakeholder | 8h |
| 3 | 1.2 | 1.2. Membentuk tim proyek | manual | 5d | 2024-09-24 | 2024-09-30 |  |  |  | MS Teams; Manajer proyek | 80h |
| 4 | 1.3 | 1.3. Menyusun business case dan project charter | manual | 3d | 2024-10-01 | 2024-10-03 |  |  |  | Google Docs; Manajer proyek | 48h |
| 5 | 1.4 | 1.4. Melakukan kick-off meeting | manual | 1d | 2024-10-04 | 2024-10-04 |  |  |  | Zoom Meeting; Manajer proyek | 16h |
| 6 | 2 | **2. Planning** |  | 15d | 2024-10-07 | 2024-10-25 |  | 0d |  |  | 288h |
| 7 | 2.1 | 2.1. Membuat scope statement | manual | 3d | 2024-10-07 | 2024-10-09 |  |  |  | Google Docs; Manajer proyek | 48h |
| 8 | 2.2 | 2.2. Membuat Work Breakdown Structure | manual | 3d | 2024-10-10 | 2024-10-14 |  |  |  | Google Docs; Manajer proyek; Draw.io | 72h |
| 9 | 2.3 | 2.3. Membuat project schedule dan alokasi sumber daya | manual | 3d | 2024-10-15 | 2024-10-17 |  |  |  | Google Docs; MS Project; Manajer proyek | 72h |
| 10 | 2.4 | 2.4. Membuat estimasi costing | manual | 3d | 2024-10-18 | 2024-10-22 |  |  |  | Google Docs; Manajer proyek | 48h |
| 11 | 2.5 | 2.5. Mengidentifikasi risiko dan penanggulangan risiko | manual | 3d | 2024-10-23 | 2024-10-25 |  |  |  | Google Docs; Manajer proyek | 48h |
| 12 | 3 | **3. Executing** |  | 90d | 2024-10-28 | 2025-02-28 |  | 0d |  |  | 3584h |
| 13 | 3.1 | 3.1.1. Mendefinisikan user requirement | manual | 1d | 2024-10-28 | 2024-10-28 |  |  |  | Google Form; Google Docs; Manajer proyek | 24h |
| 14 | 3.2 | 3.1.2. Mendefinisikan deskripsi dan kebutuhan sistem | manual | 1d | 2024-10-29 | 2024-10-29 |  |  |  | Google Docs; Manajer proyek | 16h |
| 15 | 3.3 | 3.1.3. Mendefinisikan karakteristik pengguna | manual | 1d | 2024-10-29 | 2024-10-29 |  |  |  | Google Docs; UI/UX Designer | 16h |
| 16 | 3.4 | 3.2.1. Mendefinisikan kebutuhan perangkat lunak (fungsional dan nonfungsional) |  | 2d | 2024-10-30 | 2024-10-31 | 14 | 0d |  | Google Docs; Manajer proyek | 32h |
| 17 | 3.5 | 3.2.2. Mendefinisikan fungsionalitas spesifik fitur-fitur atau modul-modul perangkat lunak |  | 2d | 2024-11-01 | 2024-11-04 | 16 | 0d |  | Google Docs; Manajer proyek | 32h |
| 18 | 3.6 | 3.2.3. Mendefinisikan user story |  | 1d | 2024-10-30 | 2024-10-30 | 15 | 4d | 0d | Google Docs; UI/UX Designer | 16h |
| 19 | 3.7 | 3.2.4. Mendefinisikan user persona |  | 1d | 2024-10-30 | 2024-10-30 | 15 | 4d | 0d | Google Docs; UI/UX Designer | 16h |
| 20 | 3.8 | 3.2.5. Membuat desain basis data perangkat lunak |  | 7d | 2024-11-05 | 2024-11-13 | 17 | 0d |  | Visual Studio Code; DevOps and Infrastructure | 112h |
| 21 | 3.9 | 3.2.6. Membuat use case diagram |  | 2d | 2024-11-01 | 2024-11-04 | 16 | 91d |  | Draw.io; DevOps and Infrastructure | 32h |
| 22 | 3.10 | 3.2.7. Membuat data flow diagram |  | 2d | 2024-11-14 | 2024-11-15 | 20 | 82d |  | Draw.io; DevOps and Infrastructure | 32h |
| 23 | 3.11 | 3.2.8. Mempersiapkan infrastruktur sistem |  | 7d | 2024-11-05 | 2024-11-13 | 17 | 84d |  | Github; Visual Studio Code; DevOps and Infrastructure | 168h |
| 24 | 3.12 | 3.2.9. Mempersiapkan CI/CD pipeline perangkat lunak |  | 2d | 2024-11-05 | 2024-11-06 | 17 | 89d |  | Github; Visual Studio Code; DevOps and Infrastructure | 48h |
| 25 | 3.13 | 3.3.1. Membuat low-fidelity prototype |  | 3d | 2024-10-31 | 2024-11-04 | 18, 19 | 4d | 0d | Figma; UI/UX Designer | 48h |
| 26 | 3.14 | 3.3.2. Membuat high-fidelity prototype |  | 5d | 2024-11-05 | 2024-11-11 | 25 | 4d | 0d | Figma; UI/UX Designer | 80h |
| 27 | 3.15 | 3.4. Menganalisis dan menguji hasil desain antarmuka |  | 2d | 2024-11-12 | 2024-11-13 | 26 | 84d |  | Figma; UI/UX Designer | 32h |
| 28 | 3.16 | 3.5.1. Implementasi bagian front end untuk fitur beranda |  | 2d | 2024-11-12 | 2024-11-13 | 25, 26 | 4d | 0d | Visual Studio Code; Frontend Developer | 32h |
| 29 | 3.17 | 3.5.2. Implementasi bagian back end untuk fitur beranda |  | 4d | 2024-11-14 | 2024-11-19 | 17, 20 | 0d |  | Visual Studio Code; Backend Developer | 64h |
| 30 | 3.18 | 3.5.3. Melakukan testing untuk fitur beranda |  | 2d | 2024-11-20 | 2024-11-21 | 28, 29 | 47d |  | Google Sheets; Quality Assurance | 32h |
| 31 | 3.19 | 3.5.4. Implementasi bagian front end untuk fitur login |  | 4d | 2024-11-14 | 2024-11-19 | 25, 26, 28 | 4d | 0d | Visual Studio Code; Frontend Developer | 64h |
| 32 | 3.20 | 3.5.5. Implementasi bagian back end untuk fitur login |  | 4d | 2024-11-20 | 2024-11-25 | 17, 20, 29 | 0d |  | Visual Studio Code; Backend Developer | 64h |
| 33 | 3.21 | 3.5.6. Melakukan testing untuk fitur login |  | 2d | 2024-11-26 | 2024-11-27 | 31, 32 | 43d |  | Google Sheets; Quality Assurance | 32h |
| 34 | 3.22 | 3.5.7. Implementasi bagian front end untuk fitur CV profiling |  | 7d | 2024-11-20 | 2024-11-28 | 25, 26, 31 | 4d | 0d | Visual Studio Code; Frontend Developer | 112h |
| 35 | 3.23 | 3.5.8. Implementasi bagian back end untuk fitur CV profiling |  | 7d | 2024-11-26 | 2024-12-04 | 17, 20, 32 | 0d |  | Visual Studio Code; Backend Developer | 112h |
| 36 | 3.24 | 3.5.9. Melakukan data training untuk fungsionalitas machine learning pada fitur CV profiling |  | 14d | 2024-11-14 | 2024-12-03 | 17, 20 | 36d | 1d | Visual Studio Code; Machine Learning Engineer | 224h |
| 37 | 3.25 | 3.5.10. Melakukan testing untuk fitur CV profiling |  | 3d | 2024-12-05 | 2024-12-09 | 34, 35, 36 | 35d |  | Google Sheets; Quality Assurance | 48h |
| 38 | 3.26 | 3.5.11. Implementasi bagian front end untuk fitur AI summarizer |  | 7d | 2024-11-29 | 2024-12-09 | 25, 26, 34 | 4d | 0d | Visual Studio Code; Frontend Developer | 112h |
| 39 | 3.27 | 3.5.12. Implementasi bagian back end untuk fitur AI summarizer |  | 7d | 2024-12-05 | 2024-12-13 | 17, 20, 35 | 0d |  | Visual Studio Code; Backend Developer | 112h |
| 40 | 3.28 | 3.5.13. Data training machine learning untuk fitur AI summarizer |  | 14d | 2024-11-14 | 2024-12-03 | 17, 20 | 36d | 8d | Visual Studio Code; Machine Learning Engineer | 224h |
| 41 | 3.29 | 3.5.14. Melakukan testing untuk fitur AI summarizer |  | 3d | 2024-12-16 | 2024-12-18 | 38, 39, 40 | 28d |  | Google Sheets; Quality Assurance | 48h |
| 42 | 3.30 | 3.5.15. Implementasi bagian front end untuk fitur pencatatan interview |  | 7d | 2024-12-10 | 2024-12-18 | 25, 26, 38 | 4d | 0d | Visual Studio Code; Frontend Developer | 112h |
| 43 | 3.31 | 3.5.16. Implementasi bagian back end untuk fitur pencatatan interview |  | 7d | 2024-12-16 | 2024-12-24 | 17, 20, 39 | 0d |  | Visual Studio Code; Backend Developer | 112h |
| 44 | 3.32 | 3.5.17. Melakukan testing untuk fitur pencatatan interview |  | 3d | 2024-12-25 | 2024-12-27 | 42, 43 | 21d |  | Google Sheets; Quality Assurance | 48h |
| 45 | 3.33 | 3.5.18. Implementasi bagian front end untuk fitur penjadwalan wawancara |  | 7d | 2024-12-19 | 2024-12-27 | 25, 26, 42 | 4d | 0d | Visual Studio Code; Frontend Developer | 112h |
| 46 | 3.34 | 3.5.19. Implementasi bagian back end untuk fitur penjadwalan wawancara |  | 7d | 2024-12-25 | 2025-01-02 | 17, 20, 43 | 0d |  | Visual Studio Code; Backend Developer | 112h |
| 47 | 3.35 | 3.5.20. Melakukan testing untuk fitur penjadwalan wawancara |  | 3d | 2025-01-03 | 2025-01-07 | 45, 46 | 14d |  | Google Sheets; Quality Assurance | 48h |
| 48 | 3.36 | 3.5.21. Implementasi bagian front end untuk fitur riwayat rekrutmen karyawan |  | 7d | 2024-12-30 | 2025-01-07 | 25, 26, 45 | 4d | 0d | Visual Studio Code; Frontend Developer | 112h |
| 49 | 3.37 | 3.5.22. Implementasi bagian back end untuk fitur riwayat rekrutmen karyawan |  | 7d | 2025-01-03 | 2025-01-13 | 17, 20, 46 | 0d |  | Visual Studio Code; Backend Developer | 112h |
| 50 | 3.38 | 3.5.23. Melakukan testing untuk fitur riwayat rekrutmen karyawan |  | 3d | 2025-01-14 | 2025-01-16 | 48, 49 | 7d |  | Google Sheets; Quality Assurance | 48h |
| 51 | 3.39 | 3.5.24. Implementasi bagian front end untuk fitur monthly review |  | 7d | 2025-01-08 | 2025-01-16 | 25, 26, 48 | 4d |  | Visual Studio Code; Frontend Developer | 112h |
| 52 | 3.40 | 3.5.25. Implementasi bagian back end untuk fitur monthly review |  | 7d | 2025-01-14 | 2025-01-22 | 17, 20, 49 | 0d |  | Visual Studio Code; Backend Developer | 112h |
| 53 | 3.41 | 3.5.26. Melakukan testing untuk fitur monthly review |  | 3d | 2025-01-23 | 2025-01-27 | 51, 52 | 0d |  | Google Sheets; Quality Assurance | 48h |
| 54 | 3.42 | 3.6.1. Feature Testing |  | 3d | 2025-01-28 | 2025-01-30 | 28, 29, 30, 31, 32, 33, 34, 35, 36, 37, 38, 39, 40, 41, 42, 43, 44, 45, 46, 47, 48, 49, 50, 51, 52, 53 | 0d |  | Google Sheets; Backend Developer; Frontend Developer; Quality Assurance; Machine Learning Engineer | 120h |
| 55 | 3.43 | 3.6.2. End-to-End Testing |  | 3d | 2025-01-31 | 2025-02-04 | 54 | 0d |  | Backend Developer; Frontend Developer; Machine Learning Engineer; Quality Assurance | 96h |
| 56 | 3.44 | 3.6.3. User Acceptance Testing (UAT) |  | 3d | 2025-02-05 | 2025-02-07 | 55 | 0d |  | Backend Developer; Frontend Developer; Machine Learning Engineer; Quality Assurance | 96h |
| 57 | 3.45 | 3.6.4. Dokumentasi hasil implementasi dan pengujian |  | 5d | 2025-02-10 | 2025-02-14 | 54, 55, 56 | 0d |  | Backend Developer; Frontend Developer | 80h |
| 58 | 3.46 | 3.7.1. Penyusunan dokumentasi |  | 5d | 2025-02-17 | 2025-02-21 | 57 | 0d |  | Backend Developer; Frontend Developer | 80h |
| 59 | 3.47 | 3.7.2. Deployment perangkat lunak |  | 5d | 2025-02-24 | 2025-02-28 | 58 | 0d |  | DevOps and Infrastructure | 40h |

| ID | WBS | Task | Duration | Start | Finish | Predecessors | Total slack | Resources | Work |
| --- | --- | --- | --- | --- | --- | --- | --- | --- | --- |
| 60 | 4 | **4. Monitoring and Controlling** | 88d | 2024-10-30 | 2025-02-28 |  | 7d |  | 3896h |
| 61 | 4.1 | 4.1.1. Mengawasi pendefinisian user story | 1d | 2024-10-30 | 2024-10-30 | 15 | 94d | Google Sheets; Manajer proyek; Quality Assurance | 24h |
| 62 | 4.2 | 4.1.2. Mengawasi pendefinisian user persona | 1d | 2024-10-30 | 2024-10-30 | 15 | 94d | Google Sheets; Quality Assurance; Manajer proyek | 24h |
| 63 | 4.3 | 4.1.3. Mengawasi pembuatan desain basis data perangkat lunak | 3d | 2024-11-05 | 2024-11-07 | 17 | 88d | Google Sheets; Manajer proyek; Quality Assurance | 72h |
| 64 | 4.4 | 4.1.4. Mengawasi pembuatan use case diagram | 2d | 2024-11-01 | 2024-11-04 | 16 | 91d | Google Sheets; Manajer proyek; Quality Assurance | 48h |
| 65 | 4.5 | 4.1.5. Mengawasi pembuatan data flow diagram | 2d | 2024-11-01 | 2024-11-04 | 16 | 91d | Google Sheets; Manajer proyek; Quality Assurance | 48h |
| 66 | 4.6 | 4.2.1. Mengawasi pembuatan low-fidelity prototype | 5d | 2024-10-31 | 2024-11-06 | 18, 19 | 89d | Google Sheets; Manajer proyek; Quality Assurance | 120h |
| 67 | 4.7 | 4.2.2. Mengawasi pembuatan high-fidelity prototype | 5d | 2024-11-05 | 2024-11-11 | 25 | 86d | Google Sheets; Manajer proyek; Quality Assurance | 120h |
| 68 | 4.8 | 4.3. Mengawasi analisis dan pengujian hasil desain antarmuka | 2d | 2024-11-12 | 2024-11-13 | 26 | 84d | Google Sheets; Quality Assurance; Manajer proyek | 48h |
| 69 | 4.9 | 4.4.1. Mengawasi implementasi bagian front end untuk fitur beranda | 2d | 2024-11-12 | 2024-11-13 | 25, 26 | 84d | Google Sheets; Manajer proyek; Quality Assurance | 48h |
| 70 | 4.10 | 4.4.2. Mengawasi implementasi bagian back end untuk fitur beranda | 4d | 2024-11-14 | 2024-11-19 | 17, 20 | 80d | Google Sheets; Manajer proyek; Quality Assurance | 96h |
| 71 | 4.11 | 4.4.3. Mengawasi implementasi bagian front end untuk fitur login | 4d | 2024-11-14 | 2024-11-19 | 25, 26, 28 | 80d | Google Sheets; Manajer proyek; Quality Assurance | 96h |
| 72 | 4.12 | 4.4.4. Mengawasi implementasi bagian back end untuk fitur login | 4d | 2024-11-20 | 2024-11-25 | 17, 20, 29 | 76d | Google Sheets; Manajer proyek; Quality Assurance | 96h |
| 73 | 4.13 | 4.4.5. Mengawasi implementasi bagian front end untuk fitur CV profiling | 7d | 2024-11-20 | 2024-11-28 | 25, 26, 31 | 73d | Google Sheets; Manajer proyek; Quality Assurance | 168h |
| 74 | 4.14 | 4.4.6. Mengawasi implementasi bagian back end untuk fitur CV profiling | 7d | 2024-11-26 | 2024-12-04 | 17, 20, 32 | 69d | Google Sheets; Quality Assurance; Manajer proyek | 168h |
| 75 | 4.15 | 4.4.7. Mengawasi melakukan data training untuk fungsionalitas machine learning pada fitur CV profiling | 14d | 2024-11-14 | 2024-12-03 | 17, 20 | 70d | Google Sheets; Manajer proyek; Quality Assurance | 336h |
| 76 | 4.16 | 4.4.8. Mengawasi implementasi bagian front end untuk fitur AI summarizer | 7d | 2024-11-29 | 2024-12-09 | 25, 26, 34 | 66d | Google Sheets; Manajer proyek; Quality Assurance | 168h |
| 77 | 4.17 | 4.4.9. Mengawasi implementasi bagian back end untuk fitur AI summarizer | 7d | 2024-12-05 | 2024-12-13 | 17, 20, 35 | 62d | Google Sheets; Manajer proyek; Quality Assurance | 168h |
| 78 | 4.18 | 4.4.10. Mengawasi data training machine learning untuk fitur AI summarizer | 14d | 2024-11-14 | 2024-12-03 | 17, 20 | 70d | Google Sheets; Manajer proyek; Quality Assurance | 336h |
| 79 | 4.19 | 4.4.11. Mengawasi implementasi bagian front end untuk fitur pencatatan interview | 7d | 2024-12-10 | 2024-12-18 | 25, 26, 38 | 59d | Google Sheets; Manajer proyek; Quality Assurance | 168h |
| 80 | 4.20 | 4.4.12. Mengawasi implementasi bagian back end untuk fitur pencatatan interview | 7d | 2024-12-16 | 2024-12-24 | 17, 20, 39 | 55d | Google Sheets; Quality Assurance; Manajer proyek | 168h |
| 81 | 4.21 | 4.4.13. Mengawasi implementasi bagian front end untuk fitur penjadwalan wawancara | 7d | 2024-12-19 | 2024-12-27 | 25, 26, 42 | 52d | Google Sheets; Manajer proyek; Quality Assurance | 168h |
| 82 | 4.22 | 4.4.14. Mengawasi implementasi bagian back end untuk fitur penjadwalan wawancara | 7d | 2024-12-25 | 2025-01-02 | 17, 20, 43 | 48d | Google Sheets; Manajer proyek; Quality Assurance | 168h |
| 83 | 4.23 | 4.4.15. Mengawasi implementasi bagian front end untuk fitur riwayat rekrutmen karyawan | 7d | 2024-12-30 | 2025-01-07 | 25, 26, 45 | 45d | Google Sheets; Manajer proyek; Quality Assurance | 168h |
| 84 | 4.24 | 4.4.16. Mengawasi implementasi bagian back end untuk fitur riwayat rekrutmen karyawan | 7d | 2025-01-03 | 2025-01-13 | 17, 20, 46 | 41d | Google Sheets; Manajer proyek; Quality Assurance | 168h |
| 85 | 4.25 | 4.4.17. Mengawasi implementasi bagian front end untuk fitur monthly review | 7d | 2025-01-08 | 2025-01-16 | 25, 26, 48 | 38d | Google Sheets; Manajer proyek; Quality Assurance | 168h |
| 86 | 4.26 | 4.4.18. Mengawasi implementasi bagian back end untuk fitur monthly review | 7d | 2025-01-14 | 2025-01-22 | 17, 20, 49 | 34d | Google Sheets; Manajer proyek; Quality Assurance | 168h |
| 87 | 4.27 | 4.5.1. Mengawasi feature testing | 3d | 2025-01-28 | 2025-01-30 | 28, 29, 30, 31, 32, 33, 34, 35, 36, 37, 38, 39, 40, 41, 42, 43, 44, 45, 46, 47, 48, 49, 50, 51, 52, 53 | 28d | Google Sheets; Manajer proyek; Quality Assurance | 72h |
| 88 | 4.28 | 4.5.2. Mengawasi end-to-end testing | 3d | 2025-01-31 | 2025-02-04 | 54 | 25d | Manajer proyek; Quality Assurance | 48h |
| 89 | 4.29 | 4.5.3. Mengawasi user acceptance testing (UAT) | 3d | 2025-02-05 | 2025-02-07 | 55 | 22d | Manajer proyek; Quality Assurance | 48h |
| 90 | 4.30 | 4.6.1. Mengawasi penyusunan dokumentasi | 5d | 2025-02-10 | 2025-02-14 | 54, 55, 56 | 17d | Google Docs; Manajer proyek; Quality Assurance | 120h |
| 91 | 4.31 | 4.6.2. Mengawasi deployment perangkat lunak | 5d | 2025-02-24 | 2025-02-28 | 58 | 0d | Manajer proyek; Quality Assurance | 80h |

| ID | WBS | Task | Duration | Start | Finish | Predecessors | Total slack | Resources | Work |
| --- | --- | --- | --- | --- | --- | --- | --- | --- | --- |
| 92 | 5 | **5. Closing** | 7d | 2025-03-03 | 2025-03-11 |  | 0d |  | 96h |
| 93 | 5.1 | 5.1. Membuat final report | 5d | 2025-03-03 | 2025-03-07 | 59, 91 | 0d | Google Docs; Manajer proyek | 80h |
| 94 | 5.2 | 5.2. Melakukan final acceptance | 2d | 2025-03-10 | 2025-03-11 | 93 | 0d | Manajer proyek | 16h |
